# PROGRAMACION KELLCAYBAMBA QUESQUENTO

Schedule from MS Project, 2025-06-02 to 2025-11-14, costs in .

## Calendars

- Estándar: Mon-Fri 09:00-13:00, 15:00-19:00; Sat-Sun off.

## Schedule

| ID | WBS | Task | Duration | Start | Finish | Predecessors | Total slack | Free slack | Cost |
| --- | --- | --- | --- | --- | --- | --- | --- | --- | --- |
| 1 | 1 | **MANTENIMIENTO PERIÓDICO DE LA RED DEPARTAMENTAL NO PAVIMENTADA CU-117 TRAMO: PARURO; CCOCHIRHUAY - ACCHA - PILLPINTO, DEL DISTRITO DE PARURO, COLCHA, ACCHA Y PILLPINTO PROVINCIA DE PARURO DEL DEPARTAMENTO DE CUSCO** | 120d | 2025-06-02 | 2025-11-14 |  |  |  | 1,883,734.45 |
| 2 | 1.1 | **ACTIVIDADES PRELIMINARES** | 22d | 2025-06-02 | 2025-07-01 |  | 1d |  | 246,886.29 |
| 3 | 1.1.1 | MOVILIZACION Y DESMOVILIZACION DE EQUIPO | 2d | 2025-06-02 | 2025-06-03 |  | 1d | 0d | 36,733.81 |
| 4 | 1.1.2 | MANTENIMIENTO DE TRANSITO TEMPORAL Y SEGURIDAD VIAL | 3d | 2025-06-04 | 2025-06-06 | 3 | 115d |  | 31,018.11 |
| 5 | 1.1.3 | CAMPAMENTO PROVISIONAL DE OBRA | 5d | 2025-06-02 | 2025-06-06 | 3SS | 115d |  | 153,211.87 |
| 6 | 1.1.4 | DESBROCE Y LIMPIEZA EN ZONAS BOSCOSAS | 22d | 2025-06-02 | 2025-07-01 | 3SS | 98d |  | 25,922.5 |
| 7 | 1.2 | **CONSERVACIÓN DE CALZADA EN AFIRMADO** | 100d | 2025-06-04 | 2025-10-21 |  | 1d | 0d | 877,388.91 |
| 8 | 1.2.1 | REPOSICIÓN DE AFIRMADO (e= 15 cm) | 100d | 2025-06-04 | 2025-10-21 | 3 | 1d | 0d | 877,388.91 |
| 9 | 1.3 | **CONSERVACIÓN EN DRENAJE SUPERFICIAL** | 34d | 2025-06-04 | 2025-07-21 |  | 84d |  | 77,615.12 |
| 10 | 1.3.1 | CONFORMACIÓN Y PERFILADO DE CUNETAS | 34d | 2025-06-04 | 2025-07-21 | 8SS | 84d |  | 77,615.12 |
| 11 | 1.4 | **REPARACIÓN MAYOR DE BADENES (10 UND)** | 28d | 2025-06-18 | 2025-07-25 | 7SS | 80d |  | 161,279.65 |
| 12 | 1.4.1 | EXCAVACION PARA ESTRUCTURAS | 2d | 2025-06-18 | 2025-06-19 | 8SS+10d | 80d | 0d | 2,508.54 |
| 13 | 1.4.2 | ENCOFRADO Y DESENCOFRADO CARAVISTA | 12d | 2025-06-18 | 2025-07-03 | 12SS | 80d | 0d | 10,103.31 |
| 14 | 1.4.3 | CONCRETO F'c=210 Kg/cm2 | 5d | 2025-07-04 | 2025-07-10 | 13 | 91d |  | 23,114.7 |
| 15 | 1.4.4 | CONCRETO F'c=210 Kg/cm2 +50% P.M. PARA CUERPO BADEN | 16d | 2025-07-04 | 2025-07-25 | 13 | 80d |  | 77,559.46 |
| 16 | 1.4.5 | CONCRETO F'c=210 Kg/cm2 +70% P.G. PARA ALEROS DE ENCAUSAMIENTO | 1d | 2025-07-04 | 2025-07-04 | 13 | 95d |  | 2,601.99 |
| 17 | 1.4.6 | EMBOQUILLADO DE PIEDRA | 2d | 2025-07-04 | 2025-07-07 | 13 | 94d |  | 9,393.95 |
| 18 | 1.4.7 | CONCRETO CICLOPEO f'c=210kg/cm2 +70% P.G. PARA DISIPADOR | 6d | 2025-07-04 | 2025-07-11 | 13 | 80d | 0d | 27,017.33 |
| 19 | 1.4.8 | RELLENOS DE ESTRUCTURAS CON MATERIAL PROPIO | 8d | 2025-07-14 | 2025-07-23 | 18 | 80d | 0d | 4,649.56 |
| 20 | 1.4.9 | ELIMINACION DE MATERIAL EXCEDENTE | 2d | 2025-07-24 | 2025-07-25 | 19 | 80d |  | 3,250.49 |
| 21 | 1.4.10 | JUNTA DE DILATACION E=1.5" | 2d | 2025-07-14 | 2025-07-15 | 18 | 88d |  | 1,080.32 |
| 22 | 1.5 | **REPARACIÓN MAYOR DE ALCANTARILLAS TIPO MARCO (6 UND)** | 17d | 2025-06-04 | 2025-06-26 | 7SS | 101d |  | 64,322.41 |
| 23 | 1.5.1 | EXCAVACION PARA ESTRUCTURAS | 1d | 2025-06-04 | 2025-06-04 |  | 101d | 0d | 449.84 |
| 24 | 1.5.2 | ENCOFRADO Y DESENCOFRADO CARAVISTA | 11d | 2025-06-12 | 2025-06-26 | 25 | 101d |  | 9,067.4 |
| 25 | 1.5.3 | ACERO DE REFUERZO fy=4,200 kg/cm2 | 5d | 2025-06-05 | 2025-06-11 | 23 | 101d | 0d | 7,311.11 |
| 26 | 1.5.4 | CONCRETO CICLOPEO F`C=175 Kg/cm2+30%PM | 7d | 2025-06-12 | 2025-06-20 | 25 | 105d | 0d | 37,016.61 |
| 27 | 1.5.5 | CONCRETO F'c=210 Kg/cm2 | 2d | 2025-06-12 | 2025-06-13 | 25 | 109d | 0d | 6,256.38 |
| 28 | 1.5.6 | RELLENOS DE ESTRUCTURAS CON MATERIAL PROPIO | 5d | 2025-06-12 | 2025-06-18 | 26SS | 107d |  | 2,949.19 |
| 29 | 1.5.7 | EMBOQUILLADO DE PIEDRA | 1d | 2025-06-16 | 2025-06-16 | 27 | 109d |  | 1,271.88 |

| ID | WBS | Task | Duration | Start | Finish | Predecessors | Total slack | Free slack | Cost |
| --- | --- | --- | --- | --- | --- | --- | --- | --- | --- |
| 30 | 1.6 | **TRANSPORTE** | 80d | 2025-06-05 | 2025-09-24 | 7SS+1d | 37d |  | 187,346.28 |
| 31 | 1.6.1 | TRANSPORTE DE MATERIALES GRANULARES PARA DISTANCIAS ENTRE 120M Y 1000 M | 70d | 2025-06-05 | 2025-09-10 |  | 37d | 0d | 117,389.74 |
| 32 | 1.6.2 | TRANSPORTE DE MATERIALES GRANULARES PARA DISTANCIAS MAYORES A 1000 M | 70d | 2025-06-05 | 2025-09-10 | 31SS | 37d | 0d | 65,862.94 |
| 33 | 1.6.3 | TRANSPORTE DE MATERIAL EXCEDENTE PARA DISTANCIAS ENTRE 120M Y 1000M | 10d | 2025-09-11 | 2025-09-24 | 32 | 37d |  | 2,802.9 |
| 34 | 1.6.4 | TRANSPORTE DE MATERIAL EXCEDENTE PARA DISTANCIAS MAYORES A 1000M | 10d | 2025-09-11 | 2025-09-24 | 32 | 37d |  | 1,290.7 |
| 35 | 1.7 | **CONSERVACION DE SEÑALIZACION Y SEGURIDAD VIAL** | 27d | 2025-10-08 | 2025-11-13 | 7FS-10d | 1d |  | 19,458.1 |
| 36 | 1.7.1 | **REPOSICION DE SEÑALES VERTICALES** | 11d | 2025-10-08 | 2025-10-22 |  | 1d |  | 7,948.72 |
| 37 | 1.7.1.1 | REPOSICION DE SEÑALES PREVENTIVAS | 4d | 2025-10-08 | 2025-10-13 |  | 1d | 0d | 3,080.7 |
| 38 | 1.7.1.2 | REPOSICION DE SEÑALES REGLAMENTARIAS | 5d | 2025-10-14 | 2025-10-20 | 37 | 1d | 0d | 2,666.24 |
| 39 | 1.7.1.3 | REPOSICION DE SEÑALES INFORMATIVAS | 2d | 2025-10-21 | 2025-10-22 | 38 | 1d | 0d | 2,201.78 |
| 40 | 1.7.2 | **CONSERVACIÓN DE POSTES DE KILOMETRAJE** | 18d | 2025-10-21 | 2025-11-13 |  | 1d |  | 11,509.38 |
| 41 | 1.7.2.1 | REPOSICION DE POSTES KILOMETRICOS | 18d | 2025-10-21 | 2025-11-13 | 39SS | 1d |  | 11,509.38 |
| 42 | 1.8 | **PROTECCION AMBIENTAL** | 17d | 2025-10-22 | 2025-11-13 | 7 | 1d |  | 249,437.69 |
| 43 | 1.8.1 | **PROGRAMA DE MEDIDAS PREVENTIVAS, MITIGADORAS Y CORRECTIVAS** | 13d | 2025-10-22 | 2025-11-07 | 40SS | 1d | 0d | 239,624.46 |
| 44 | 1.8.1.1 | MITIGACIÓN DE MATERIAL PARTICULADO (RIEGO) | 8d | 2025-10-22 | 2025-10-31 |  | 1d | 0d | 220,590 |
| 45 | 1.8.1.2 | CONFORMACION Y ACOMODO DE DME | 5d | 2025-11-03 | 2025-11-07 | 44 | 1d |  | 19,034.46 |
| 46 | 1.8.2 | **RECUPERACIÓN AMBIENTAL DE AREAS AFECTADAS** | 2d | 2025-11-10 | 2025-11-11 | 43 | 1d | 0d | 4,947.43 |
| 47 | 1.8.2.1 | RECUPERACION DE PATIO DE MAQUINAS | 1d | 2025-11-10 | 2025-11-10 | 34SS | 2d |  | 491.2 |
| 48 | 1.8.2.2 | RECUPERACION DE AREAS DE CANTERA | 2d | 2025-11-10 | 2025-11-11 | 34SS | 1d |  | 3,555.36 |
| 49 | 1.8.2.3 | PROGRAMA DE REVEGETACIÓN | 1d | 2025-11-10 | 2025-11-10 | 34SS | 2d |  | 900.87 |
| 50 | 1.8.3 | **PROGRAMA DE MANEJO DE RESIDUOS SÓLIDOS** | 2d | 2025-11-12 | 2025-11-13 | 46 | 1d |  | 4,865.8 |
| 51 | 1.8.3.1 | ALMACENAMIENTO DE RESIDUOS SÓLIDOS (CONTENEDORES) | 1d | 2025-11-12 | 2025-11-12 |  | 1d | 0d | 1,677.9 |
| 52 | 1.8.3.2 | TRANSPORTE Y DISPOSICIÓN FINAL DE RESIDUOS SÓLIDOS | 1d | 2025-11-13 | 2025-11-13 | 51 | 1d |  | 3,187.9 |
